# Dap Project

Schedule from GanttProject, 2024-05-21 to 2024-12-02.
Keyban
Holidays every year on 01-01, 05-01, 05-08, 07-14, 08-15, 11-01, 11-11, 12-25

## Calendars

- Project calendar: Mon-Fri working; Sat-Sun off.

## Resources

| Resource | Group | Rate |
| --- | --- | --- |
| Ahmed | Senior Dev | 100 |
| Sam | Senior Dev | 100 |
| Greg | Back End Dev | 100 |
| Radek | React/React Native Dev |  |
| Maxime | Senior Dev | 100 |
| Seb |  |  |
| Damian | DevOps |  |
| Kei |  | 50 |

## Schedule

| ID | WBS | Task | Duration | Start | Finish | Predecessors | Resources | RAF | Fibo Est. | Charge |
| --- | --- | --- | --- | --- | --- | --- | --- | --- | --- | --- |
| 1 | 1 | **Hedera** | 73d | 2024-05-21 | 2024-08-30 |  |  | 73 |  |  |
| 2 | 1.1 | **EdDSA TSS MPC React Signer** | 9d | 2024-05-21 | 2024-05-31 |  |  | 9 | 65 | 40 |
| 3 | 1.1.1 | EdDSA TSS MPC React Signer #1 | 9d | 2024-05-21 | 2024-05-31 |  | Ahmed | 9 |  |  |
| 4 | 1.1.2 | EdDSA TSS MPC React Signer #2 | 9d | 2024-05-21 | 2024-05-31 |  | Greg | 9 |  |  |
| 5 | 1.1.3 | EdDSA TSS MPC React Signer #3 | 9d | 2024-05-21 | 2024-05-31 |  | Sam | 9 |  |  |
| 6 | 1.1.4 | EdDSA TSS MPC React Signer #4 | 9d | 2024-05-21 | 2024-05-31 |  | Radek | 9 |  |  |
| 7 | 1.2 | **C4 model** | 1d | 2024-06-03 | 2024-06-03 |  |  | 1 | 2 | 2 |
| 8 | 1.2.1 | C4 model #1 | 1d | 2024-06-03 | 2024-06-03 | 5 | Sam | 1 |  |  |
| 9 | 1.2.2 | C4 model #2 | 1d | 2024-06-03 | 2024-06-03 |  | Damian | 1 |  |  |
| 10 | 1.3 | Deploy the CI/CD for testing | 20d | 2024-06-04 | 2024-07-01 | 9 | Damian | 20 | 16 | 20 |
| 11 | 1.4 | **Zero trust Architecture** | 10d | 2024-06-03 | 2024-06-14 |  |  | 10 | 65 | 15 |
| 12 | 1.4.1 | Zero trust Architecture #1 | 10d | 2024-06-03 | 2024-06-14 | 4 | Greg | 10 |  |  |
| 13 | 1.4.2 | Zero trust Architecture #2 | 5d | 2024-06-04 | 2024-06-10 | 8 | Sam | 5 |  |  |
| 14 | 1.5 | Deploy the CI/CD per branch | 20d | 2024-07-02 | 2024-07-29 | 10 | Damian | 20 | 25 | 20 |
| 15 | 1.6 | **Unified Error Handling + loggers** | 9d | 2024-06-11 | 2024-06-21 |  |  | 9 | 10 | 10 |
| 16 | 1.6.1 | Unified Error Handling + loggers #2 | 5d | 2024-06-11 | 2024-06-17 | 13 | Sam | 5 |  |  |
| 17 | 1.6.2 | Unified Error Handling + loggers #1 | 5d | 2024-06-17 | 2024-06-21 | 12 | Greg | 5 |  |  |
| 18 | 1.7 | React Component for SmartPhone Native Key Storage Solution | 8d | 2024-06-03 | 2024-06-12 | 6 | Radek | 8 | 9 | 8 |
| 19 | 1.8 | **React Wallet SDK Setup** | 12d | 2024-06-13 | 2024-06-28 |  |  | 12 | 16 | 20 |
| 20 | 1.8.1 | React Wallet SDK Setup #1 | 10d | 2024-06-17 | 2024-06-28 |  | Maxime | 10 |  |  |
| 21 | 1.8.2 | React Wallet SDK Setup #2 | 10d | 2024-06-13 | 2024-06-26 | 18 | Radek | 10 |  |  |
| 22 | 1.9 | **React Hedera account** | 11d | 2024-06-17 | 2024-07-01 |  |  | 11 | 15 | 20 |
| 23 | 1.9.1 | React Hedera account #1 | 10d | 2024-06-18 | 2024-07-01 | 16 | Sam | 10 |  |  |
| 24 | 1.9.2 | React Hedera account #2 | 10d | 2024-06-17 | 2024-06-28 |  | Ahmed | 10 |  |  |

| ID | WBS | Task | Duration | Start | Finish | Predecessors | Resources | Fibo Est. | RAF | Charge |
| --- | --- | --- | --- | --- | --- | --- | --- | --- | --- | --- |
| 25 | 1.10 | **React Account listing Component + Pagination** | 5d | 2024-06-24 | 2024-06-28 |  |  | 3 | 5 | 4 |
| 26 | 1.10.1 | React Account listing Component + Pagination #1 | 2d | 2024-06-24 | 2024-06-25 | 17 | Greg |  | 2 |  |
| 27 | 1.10.2 | React Account listing Component + Pagination #2 | 2d | 2024-06-27 | 2024-06-28 | 21 | Radek |  | 2 |  |
| 28 | 1.11 | **React User Authorization helper - generic OAuth2 support - sdk + backend handling** | 14d | 2024-06-26 | 2024-07-15 |  |  | 25 | 14 | 20 |
| 29 | 1.11.1 | React User Authorization helper - generic OAuth2 support - sdk + backend handling #1 | 10d | 2024-07-02 | 2024-07-15 | 23 | Sam |  | 10 |  |
| 30 | 1.11.2 | React User Authorization helper - generic OAuth2 support - sdk + backend handling #2 | 10d | 2024-06-26 | 2024-07-09 | 26 | Greg |  | 10 |  |
| 31 | 1.12 | **Store the server key share in a KMS** | 12d | 2024-07-01 | 2024-07-16 |  |  | 10 | 12 | 10 |
| 32 | 1.12.1 | Store the server key share in a KMS #1 | 5d | 2024-07-10 | 2024-07-16 | 30 | Greg |  | 5 |  |
| 33 | 1.12.2 | Store the server key share in a KMS #2 | 5d | 2024-07-01 | 2024-07-05 | 20 | Maxime |  | 5 |  |
| 34 | 1.13 | Application Definition Interface - Admin portal (Only APIs?) | 5d | 2024-07-08 | 2024-07-12 | 33 | Maxime | 8 | 5 | 5 |
| 35 | 1.14 | **React Native Balance Display + RPC node & indexer access** | 4d | 2024-07-01 | 2024-07-04 |  |  | 6 | 4 | 8 |
| 36 | 1.14.1 | React Native Balance Display + RPC node & indexer access #1 | 4d | 2024-07-01 | 2024-07-04 | 24 | Ahmed |  | 4 |  |
| 37 | 1.14.2 | React Native Balance Display + RPC node & indexer access #2 | 4d | 2024-07-01 | 2024-07-04 | 27 | Radek |  | 4 |  |
| 38 | 1.15 | **React Non-Native Balance Display** | 5d | 2024-07-05 | 2024-07-11 |  |  | 10 | 5 | 10 |
| 39 | 1.15.1 | React Non-Native Balance Display #1 | 5d | 2024-07-05 | 2024-07-11 | 36 | Ahmed |  | 5 |  |
| 40 | 1.15.2 | React Non-Native Balance Display #2 | 5d | 2024-07-05 | 2024-07-11 | 37 | Radek |  | 5 |  |
| 41 | 1.16 | **React Token Balance Display & Token details** | 6d | 2024-07-12 | 2024-07-19 |  |  | 10 | 6 | 10 |
| 42 | 1.16.1 | React Token Balance Display & Token details #1 | 5d | 2024-07-15 | 2024-07-19 | 34 | Maxime |  | 5 |  |
| 43 | 1.16.2 | React Token Balance Display & Token details #2 | 5d | 2024-07-12 | 2024-07-18 | 40 | Radek |  | 5 |  |
| 44 | 1.17 | **React Network selection component** | 10d | 2024-07-12 | 2024-07-25 |  |  | 10 | 10 | 10 |
| 45 | 1.17.1 | React Network selection component #1 | 5d | 2024-07-12 | 2024-07-18 | 39 | Ahmed |  | 5 |  |
| 46 | 1.17.2 | React Network selection component #2 | 5d | 2024-07-19 | 2024-07-25 | 43 | Radek |  | 5 |  |
| 47 | 1.18 | SDK Documentation Hub | 2d | 2024-07-26 | 2024-07-29 | 44 | Seb | 2 | 2 | 2 |
| 48 | 1.19 | Quick Start Guides | 2d | 2024-07-30 | 2024-07-31 | 47 | Seb | 2 | 2 | 2 |
| 49 | 1.20 | FAQs and Troubleshooting | 2d | 2024-08-01 | 2024-08-02 | 48 | Seb | 2 | 2 | 2 |

| ID | WBS | Task | Duration | Start | Finish | Predecessors | Resources | Fibo Est. | RAF | Charge |
| --- | --- | --- | --- | --- | --- | --- | --- | --- | --- | --- |
| 50 | 1.21 | **React Received Transactions History Component** | 5d | 2024-07-22 | 2024-07-26 |  |  | 5 | 5 | 5 |
| 51 | 1.21.1 | React Received Transactions History Component #1 | 5d | 2024-07-22 | 2024-07-26 | 42 | Maxime |  | 5 |  |
| 52 | 1.22 | **React Native Cryptocurrency Send Component** | 12d | 2024-07-19 | 2024-08-05 | 2 |  | 9 | 12 | 8 |
| 53 | 1.22.1 | React Native Cryptocurrency Send Component #1 | 7d | 2024-07-19 | 2024-07-29 | 45 | Ahmed |  | 7 |  |
| 54 | 1.22.2 | React Native Cryptocurrency Send Component #2 | 7d | 2024-07-26 | 2024-08-05 | 46 | Radek |  | 7 |  |
| 55 | 1.23 | React Pending Transactions History Component | 1d | 2024-07-30 | 2024-07-30 | 53 | Ahmed | 5 | 1 | 5 |
| 56 | 1.24 | **React Notification for Incoming and Outgoing Cryptocurrency Transactions on Hedera** | 22d | 2024-07-17 | 2024-08-16 |  |  | 40 | 22 | 25 |
| 57 | 1.24.1 | React Notification for Incoming and Outgoing Cryptocurrency Transactions on Hedera #1 | 8d | 2024-07-29 | 2024-08-07 | 51 | Maxime |  | 8 |  |
| 58 | 1.24.2 | React Notification for Incoming and Outgoing Cryptocurrency Transactions on Hedera #2 | 8d | 2024-07-17 | 2024-07-26 | 32 | Greg |  | 8 |  |
| 59 | 1.24.3 | React Notification for Incoming and Outgoing Cryptocurrency Transactions on Hedera #3 | 8d | 2024-08-06 | 2024-08-16 | 54 | Radek |  | 8 |  |
| 60 | 1.25 | React Sent Transactions History Component | 3d | 2024-07-31 | 2024-08-02 | 55 | Ahmed | 5 | 3 | 5 |
| 61 | 1.26 | **React Token Send Component (Non-native Tokens)** | 12d | 2024-07-29 | 2024-08-13 |  |  | 9 | 12 | 8 |
| 62 | 1.26.1 | React Token Send Component (Non-native Tokens) #1 | 7d | 2024-08-05 | 2024-08-13 | 60 | Ahmed |  | 7 |  |
| 63 | 1.26.2 | React Token Send Component (Non-native Tokens) #2 | 7d | 2024-07-29 | 2024-08-06 | 58 | Greg |  | 7 |  |
| 64 | 1.27 | **Signer Operation Benchmarking** | 26d | 2024-07-16 | 2024-08-21 |  |  | 25 | 26 | 20 |
| 65 | 1.27.1 | Signer Operation Benchmarking #1 | 26d | 2024-07-16 | 2024-08-21 | 29 | Sam |  | 26 |  |
| 66 | 1.28 | Deploy the prod infra | 5d | 2024-07-30 | 2024-08-05 | 14 | Damian | 5 | 5 |  |
| 67 | 1.29 | **Pen testing** | 34d | 2024-07-15 | 2024-08-30 |  |  | 40 | 34 | 25 |
| 68 | 1.29.1 | Pen testing #1 | 5d | 2024-07-15 | 2024-07-19 |  | Seb |  | 5 |  |
| 69 | 1.29.2 | Pen testing #2 | 5d | 2024-08-23 | 2024-08-29 | 95 | Maxime |  | 5 |  |
| 70 | 1.29.3 | Pen testing #3 | 5d | 2024-08-22 | 2024-08-28 | 65 | Sam |  | 5 |  |
| 71 | 1.29.4 | Pen testing #4 | 5d | 2024-08-14 | 2024-08-21 | 62 | Ahmed |  | 5 |  |
| 72 | 1.29.5 | Pen testing #5 | 5d | 2024-08-26 | 2024-08-30 | 94 | Radek |  | 5 |  |
| 73 | 2 | **React Component for SmartPhone Unsafe Key Storage Solution** | 4d | 2024-09-02 | 2024-09-05 | 1 |  | 6 | 4 | 8 |
| 74 | 2.1 | React Component for SmartPhone Unsafe Key Storage Solution #1 | 4d | 2024-09-02 | 2024-09-05 |  |  |  | 4 |  |
| 75 | 2.2 | React Component for SmartPhone Unsafe Key Storage Solution #2 | 4d | 2024-09-02 | 2024-09-05 |  |  |  | 4 |  |

| ID | WBS | Task | Duration | Start | Finish | Predecessors | Resources | RAF | Fibo Est. | Charge |
| --- | --- | --- | --- | --- | --- | --- | --- | --- | --- | --- |
| 76 | 3 | **SoC 2** | 58d | 2024-08-06 | 2024-10-25 |  |  | 58 |  |  |
| 77 | 3.1 | Service SLA Features | 20d | 2024-08-06 | 2024-09-03 | 66 | Damian | 20 | 16 | 20 |
| 78 | 3.2 | Real-Time Platform Status Page | 10d | 2024-08-07 | 2024-08-21 | 63 | Greg | 10 | 10 | 10 |
| 79 | 3.3 | SOC 2 Certification | 40d | 2024-09-02 | 2024-10-25 | 1 |  | 40 | 105 | 40 |
| 80 | 4 | **EcDSA TSS MPC React Signer** | 15d | 2024-09-02 | 2024-09-20 | 1 |  | 15 | 104 | 40 |
| 81 | 4.1 | EcDSA TSS MPC React Signer #1 | 15d | 2024-09-02 | 2024-09-20 |  |  | 15 |  |  |
| 82 | 4.2 | EcDSA TSS MPC React Signer #2 | 15d | 2024-09-02 | 2024-09-20 |  |  | 15 |  |  |
| 83 | 4.3 | EcDSA TSS MPC React Signer #3 | 10d | 2024-09-02 | 2024-09-13 |  |  | 10 |  |  |
| 84 | 5 | React Component for Browser Unsafe Key Storage Solution | 4d | 2024-09-02 | 2024-09-05 | 1 |  | 4 | 4 | 4 |
| 85 | 6 | React Polygon account | 8d | 2024-09-02 | 2024-09-11 | 1 |  | 8 | 6 |  |
| 86 | 7 | React client share remote storage (KMS) + data replication strategies | 10d | 2024-09-02 | 2024-09-13 | 1 |  | 10 | 15 | 20 |
| 87 | 8 | Smart Account Contract + Factory | 39d | 2024-09-02 | 2024-10-24 | 1 |  | 39 | 39 |  |
| 88 | 9 | Gas-Less Transaction via Gas Sponsoring | 64d | 2024-09-02 | 2024-12-02 | 1 |  | 64 | 64 |  |
| 89 | 10 | Operational Cost Management for Infrastructure and Services | 15d | 2024-09-02 | 2024-09-20 | 1 |  | 15 | 24 | 15 |
| 90 | 11 | React Notification for Incoming and Outgoing Cryptocurrency Transactions on Polygon | 20d | 2024-09-02 | 2024-09-27 | 1 |  | 20 | 25 |  |
| 91 | 12 | **Holidays** | 30d | 2024-07-12 | 2024-08-23 |  |  | 30 |  |  |
| 92 | 12.1 | **Summer 2024** | 30d | 2024-07-12 | 2024-08-23 |  |  | 30 |  |  |
| 93 | 12.1.1 | Sam - Summer Holidays 2024 | 11d | 2024-07-12 | 2024-07-26 |  | Sam | 11 |  |  |
| 94 | 12.1.2 | Radek - Summer Holidays 2024 | 5d | 2024-08-19 | 2024-08-23 | 59 | Radek | 5 |  |  |
| 95 | 12.1.3 | Maxime - Summer Holidays 2024 | 10d | 2024-08-08 | 2024-08-22 | 57 | Maxime | 10 |  |  |

Notes:
- 87: To estimate
